# 东科 Vth -1V（IN0293）

Schedule from a web Gantt chart, 2025-09-29 to 2026-12-29.
Every day is a working day

## Schedule

| ID | WBS | Task | Duration | Start | Finish | Predecessors | Complete | Status | inPeople |
| --- | --- | --- | --- | --- | --- | --- | --- | --- | --- |
| 2 | 1 | kick-off | 1d | 2025-09-29 | 2025-09-29 |  | 100% | done |  |
| 3 | 2 | 项目立项会议 | 1d | 2025-10-15 | 2025-10-15 |  |  | waiting |  |
| 4 | 3 | **1st Learning Cycle** | 103d | 2025-11-04 | 2026-02-14 |  | 8% |  |  |
| 5 | 3.1 | Tape out | 7d | 2025-11-04 | 2025-11-10 |  | 100% | done |  |
| 6 | 3.2 | CP Probe Card | 42d | 2025-11-04 | 2025-12-15 |  | 16% |  | 董得福 |
| 7 | 3.3 | Wafer Process(Skip CP) | 30d | 2025-11-14 | 2025-12-13 |  |  |  |  |
| 8 | 3.4 | WLRE | 11d | 2025-12-14 | 2025-12-24 | 7 |  | waiting |  |
| 9 | 3.5 | Assembly | 26d | 2025-12-14 | 2026-01-08 | 7 |  | waiting | 谢书生 |
| 10 | 3.6 | **RE** | 40d | 2026-01-06 | 2026-02-14 |  |  | waiting | 刘子良/邓超凡 |
| 11 | 3.6.1 | RE 168H | 14d | 2026-01-06 | 2026-01-19 |  |  | waiting |  |
| 12 | 3.6.2 | RE 1000H | 40d | 2026-01-06 | 2026-02-14 |  |  | waiting |  |
| 13 | 4 | **2nd Learning Cycle** | 120d | 2026-01-30 | 2026-05-29 |  |  | waiting |  |
| 14 | 4.1 | Wafer & Assembly | 80d | 2026-01-30 | 2026-04-19 |  |  | waiting |  |
| 15 | 4.2 | RE 1000H | 40d | 2026-04-20 | 2026-05-29 | 14 |  | waiting | 刘子良/邓超凡 |
| 16 | 5 | **3rd Learning Cycle** | 90d | 2026-05-31 | 2026-08-28 |  |  | waiting |  |
| 17 | 5.1 | Wafer & Assembly | 50d | 2026-05-31 | 2026-07-19 |  |  | waiting |  |
| 18 | 5.2 | RE 1000H | 40d | 2026-07-20 | 2026-08-28 | 17 |  | waiting | 刘子良/邓超凡 |
| 19 | 6 | **Formal Qual.** | 121d | 2026-08-31 | 2026-12-29 |  |  | waiting |  |
| 20 | 6.1 | SPW W/S | 41d | 2026-08-31 | 2026-10-10 |  |  | waiting |  |
| 21 | 6.2 | F/O & Assemby out | 30d | 2026-10-11 | 2026-11-09 | 20 |  | waiting |  |
| 22 | 6.3 | RE 168H | 15d | 2026-11-10 | 2026-11-24 | 21 |  | waiting | 刘子良/邓超凡 |
| 23 | 6.4 | RE 1000H | 50d | 2026-11-10 | 2026-12-29 | 21 |  | waiting | 刘子良/邓超凡 |
